| uid | wbsOrder | name | start | finish | notes | actualStart | actualFinish | percentComplete |
| --- | --- | --- | --- | --- | --- | --- | --- | --- |
| 1 | 1 | CR-751(GRS JSON スキーマの自己説明)の適用 | 2026-10-15T02:00:00 | 2026-10-15T03:04:00 | 02:00 は土台 43b7315a、03:04 は dist の作り直し 102a8474。 | 2026-10-15T02:00:00 | 2026-10-15T03:04:00 | 100 |
| 50 | 2 | 試験待ち 6 行(DFC-2449〜2466)の仕様だけを読む試験の作成 | 2026-10-15T02:15:00 | 2026-10-15T02:32:00 | 9792e32f、合流 fb383e8f。 | 2026-10-15T02:15:00 | 2026-10-15T02:32:00 | 100 |
| 51 | 3 | 1 枚のチェックリスト(user-checklist-2026-10-15)の起草 | 2026-10-15T02:15:00 | 2026-10-15T02:41:00 | c5aef0cc・0262b17a、合流 a0dcc673。 | 2026-10-15T02:15:00 | 2026-10-15T02:41:00 | 100 |
| 52 | 4 | CR-740・752・753(覚え置き・呼び方・Ctrl の写し)の起草 | 2026-10-15T02:15:00 | 2026-10-15T03:40:00 | 06f8e4a9・f55e1f58、合流 e9d2a243。 | 2026-10-15T02:15:00 | 2026-10-15T03:40:00 | 100 |
| 53 | 5 | CR-758(依存線とマーカーの干渉解消)の起草 | 2026-10-15T02:15:00 | 2026-10-15T03:40:00 | 6201a739・d4c9a219、合流 bc632547。 | 2026-10-15T02:15:00 | 2026-10-15T03:40:00 | 100 |
| 3 | 6 | 表の窓の聞き取り(DFC-2600〜2615)の記録 | 2026-10-15T02:20:00 | 2026-10-15T03:53:00 | 4134b69f、合流 0d9fdb3f。 | 2026-10-15T02:20:00 | 2026-10-15T03:53:00 | 100 |
| 5 | 7 | 工程の強制の道具(push の見張り・検査 78〜80)の実装 | 2026-10-15T02:20:00 | 2026-10-15T04:13:00 | 076bd74c、合流 7c364713。push 済み 92015a29。 | 2026-10-15T02:20:00 | 2026-10-15T04:13:00 | 100 |
| 54 | 8 | CR-754〜757(設定パネル・タイムゾーン・ダミー実績・全体シフト)の起草 | 2026-10-15T02:20:00 | 2026-10-15T05:57:00 | d5eb0800 ほか、合流 a773ede9・6d81c750。 | 2026-10-15T02:20:00 | 2026-10-15T05:57:00 | 100 |
| 6 | 9 | JDG-2071(仕様書が正)の権威の調査 | 2026-10-15T02:40:00 | 2026-10-15T04:09:00 | bc3ee32d、合流 d60bdf78。 | 2026-10-15T02:40:00 | 2026-10-15T04:09:00 | 100 |
| 55 | 10 | 紹介頁(docs/about)のダーク切替の実装 | 2026-10-15T02:40:00 | 2026-10-15T04:05:00 | 8b7f8e54、合流 e092ae24。push 済み。 | 2026-10-15T02:40:00 | 2026-10-15T04:05:00 | 100 |
| 56 | 11 | プロジェクト計画(project-plan)の初版と直し | 2026-10-15T03:44:00 | 2026-10-15T05:09:00 | 初版 5b305da1 から吹き出しの直し 4a907919 まで。始まりはこの席の最初の測り。 | 2026-10-15T03:44:00 | 2026-10-15T05:09:00 | 100 |
| 4 | 12 | CR-753(Ctrl ドラッグの写しを移動と同じ所へ)の実装 | 2026-10-15T04:13:00 | 2026-10-15T05:53:00 | c76c7ee3、合流 bce31827。 | 2026-10-15T04:13:00 | 2026-10-15T05:53:00 | 100 |
| 8 | 13 | CR-752(公開名の呼び方と直す案の行の鍵)の仕様反映 | 2026-10-15T04:55:00 | 2026-10-15T06:15:00 | 9fec527e、合流 fc80c39b、台帳 66d989c6。 | 2026-10-15T04:55:00 | 2026-10-15T06:15:00 | 100 |
| 57 | 14 | STOP の印の仕分け(DFC-2647)の調べ | 2026-10-15T05:09:00 | 2026-10-15T05:36:00 | 75c38edf、合流 c77b5211。 | 2026-10-15T05:09:00 | 2026-10-15T05:36:00 | 100 |
| 33 | 15 | CR-759〜762(表の窓)の起草 | 2026-10-15T05:02:00 | 2026-10-15T07:08:00 | 03b7d3a8・5daf3df8、合流 65aac09f・d41292d1。 | 2026-10-15T05:02:00 | 2026-10-15T07:08:00 | 100 |
| 58 | 16 | CR-765〜768(仕様が正の原稿)の起草 | 2026-10-15T05:09:00 | 2026-10-15T06:07:00 | 04d5c89c・71a52294、合流 8e7f1419・8f6647f4。 | 2026-10-15T05:09:00 | 2026-10-15T06:07:00 | 100 |
| 60 | 17 | プロジェクト計画(project-plan)の更新と前の計画の重ね | 2026-10-15T07:12:00 | 2026-10-15T07:36:00 | 777750c3・c6110109、合流 423bd94b・d8feb1c0。 | 2026-10-15T07:12:00 | 2026-10-15T07:36:00 | 100 |
| 80 | 18 | CR-763/764(飛び先のマーカーほか)の起草の仕上げ | 2026-10-15T03:53:00 | 2026-10-15T07:30:00 | fedf4b3a、合流 7cd862bb。 | 2026-10-15T03:53:00 | 2026-10-15T07:30:00 | 100 |
| 7 | 19 | CR-740(範囲選択中の下の絵の覚え置き)の実装 | 2026-10-15T04:13:00 | 2026-10-15T07:21:00 | f2104be6 から、合流の後の基準値 f412a5e6 まで。 | 2026-10-15T04:13:00 | 2026-10-15T07:21:00 | 100 |
| 9 | 20 | CR-758(依存線とマーカーの干渉解消)の実装 | 2026-10-15T04:13:00 | 2026-10-15T07:58:00 | 合流 f6796d70、試験の結び 786a7b52。 | 2026-10-15T04:13:00 | 2026-10-15T07:58:00 | 100 |
| 23 | 21 | CR-757(全体日程のシフト)の実装 | 2026-10-15T05:58:00 | 2026-10-15T07:59:00 | ac41487f・dac985e9、合流 a43ebb9e。 | 2026-10-15T05:58:00 | 2026-10-15T07:59:00 | 100 |
| 61 | 22 | CR-769〜771(英語の慣習)の調べ | 2026-10-15T06:15:00 | 2026-10-15T07:54:00 | 合流 836723b2。 | 2026-10-15T06:15:00 | 2026-10-15T07:54:00 | 100 |
| 90 | 23 | CR-769〜771(英語の慣習)の起草と答えの記録 | 2026-10-15T07:54:00 | 2026-10-15T08:25:00 | 3eca47e4(JDG-2245〜2251)。 | 2026-10-15T07:54:00 | 2026-10-15T08:25:00 | 100 |
| 22 | 24 | CR-756(分単位のダミー実績)の実装 | 2026-10-15T08:09:00 | 2026-10-15T11:04:00 | 78f21a2b から、合流 cc5f6a9b。 | 2026-10-15T08:09:00 | 2026-10-15T11:04:00 | 100 |
| 21 | 25 | CR-755(タイムゾーンの固定の時差と略称)の実装 | 2026-10-15T08:09:00 | 2026-10-15T11:04:00 | c775ad8c から、合流 cc5f6a9b。 | 2026-10-15T08:09:00 | 2026-10-15T11:04:00 | 100 |
| 65 | 26 | CR-762(列の境目を引く幅の追従)の実装 | 2026-10-15T08:25:00 | 2026-10-15T11:04:00 | ac70da58 から、合流 cc5f6a9b。 | 2026-10-15T08:25:00 | 2026-10-15T11:04:00 | 100 |
| 72 | 27 | CR-761(列のフィルタの一覧)の実装 | 2026-10-15T08:46:00 | 2026-10-15T11:04:00 | 408d8b6b から、合流 cc5f6a9b。 | 2026-10-15T08:46:00 | 2026-10-15T11:04:00 | 100 |
| 119 | 28 | DFC-2765(変更前の輪郭が日に丸まる)の直し | 2026-10-15T08:25:00 | 2026-10-15T11:04:00 | 276c4ed7、合流 cc5f6a9b。 | 2026-10-15T08:25:00 | 2026-10-15T11:04:00 | 100 |
| 81 | 29 | CR-763(飛び先の輪のバラ色と角丸)の実装 | 2026-10-15T08:25:00 | 2026-10-15T11:04:00 | 81c43dd3 から、合流 cc5f6a9b。 | 2026-10-15T08:25:00 | 2026-10-15T11:04:00 | 100 |
| 67 | 30 | CR-759(修正案の表の語と推奨の一括採用)の実装 | 2026-10-15T08:25:00 | 2026-10-15T11:05:00 | 3c092e7b から、dist 1b4d2119。 | 2026-10-15T08:25:00 | 2026-10-15T11:05:00 | 100 |
| 69 | 31 | CR-760(表のステータスと種別の列)の実装 | 2026-10-15T08:25:00 | 2026-10-15T11:05:00 | 945331cb から、dist 1b4d2119。 | 2026-10-15T08:25:00 | 2026-10-15T11:05:00 | 100 |
| 120 | 32 | CR-764(診断マーカーを押すとレポートの行)の実装 | 2026-10-15T11:05:00 | 2026-10-15T13:04:00 | 合流 e68a78e5。 | 2026-10-15T11:05:00 | 2026-10-15T13:04:00 | 100 |
| 78 | 33 | CR-765(Agent API の呼び方の原稿)の実装 | 2026-10-15T11:05:00 | 2026-10-15T13:24:00 | 45290213、試験の合流 c0822e59。 | 2026-10-15T11:05:00 | 2026-10-15T13:24:00 | 100 |
| 88 | 34 | CR-768(保存の媒体の型)の A・B の実装 | 2026-10-15T12:19:00 | 2026-10-15T13:26:00 | 2502b5ec、試験の合流 4e9b9d9c。 | 2026-10-15T12:19:00 | 2026-10-15T13:26:00 | 100 |
| 25 | 35 | CR-754(日付の欄と設定パネル)の実装 | 2026-10-15T10:28:00 | 2026-10-15T13:55:00 | e8ce940f・233836a9、合流 1b437554。 | 2026-10-15T10:28:00 | 2026-10-15T13:55:00 | 100 |
| 83 | 36 | CR-766(文書の命令が運ぶ値の原稿)の実装 | 2026-10-15T12:19:00 | 2026-10-15T14:34:00 | de04c75b から、試験の合流 b4083756。 | 2026-10-15T12:19:00 | 2026-10-15T14:34:00 | 100 |
| 91 | 37 | CR-769(保存する名と連携の名の英語)の実装 | 2026-10-15T14:37:00 | 2026-10-15T16:06:00 | dc055615、合流 84daf515、古い試験の直し b8937413。 | 2026-10-15T14:37:00 | 2026-10-15T16:06:00 | 100 |
| 121 | 38 | CR-770(画面の英語の語)の実装 | 2026-10-15T15:44:00 | 2026-10-15T17:23:00 | 52ec9b9e、合流 b8fe0d50。 | 2026-10-15T15:44:00 | 2026-10-15T17:23:00 | 100 |
| 122 | 39 | DFC-2309(開けないファイルの通知)の直し | 2026-10-15T16:06:00 | 2026-10-15T17:20:00 | 27a4717a・f6049838、合流 ffa4a112。 | 2026-10-15T16:06:00 | 2026-10-15T17:20:00 | 100 |
| 98 | 40 | CR-771(コードの公開名と配る物の名)の実装 | 2026-10-15T17:23:00 | 2026-10-15T23:57:00 | 合流 3337922a。 | 2026-10-15T17:23:00 | 2026-10-15T23:57:00 | 100 |
| 97 | 41 | 裁定待ち 約 15 問(CR-754・759〜770・DFC-2880)への答え | 2026-10-15T22:30:00 | 2026-10-16T00:03:00 | 答えの記録 JDG-2320・2330・2340・2350〜2352・2360〜2364・2370〜2374 の合流まで。始まりは測れないので前の計画の予定 22:30 を置いた。 | 2026-10-15T22:30:00 | 2026-10-16T00:03:00 | 100 |
| 123 | 42 | 紹介頁(docs/about)の表紙の .md の仕様へのリンクと見本 | 2026-10-15T17:23:00 | 2026-10-15T23:57:00 | ec04868b、合流 da4a50cd。 | 2026-10-15T17:23:00 | 2026-10-15T23:57:00 | 100 |
| 112 | 43 | DFC-2880(出荷見本が開けない)の直し | 2026-10-15T17:23:00 | 2026-10-15T23:57:00 | JDG-2370〜2374 の記録 5cbf2fc9、合流 bdee0bc0。台帳は実測待ち。 | 2026-10-15T17:23:00 | 2026-10-15T23:57:00 | 100 |
| 103 | 44 | CR-773(利用者が答えた 6 つの裁定)の実装 | 2026-10-16T00:01:00 | 2026-10-16T00:46:00 | 合流 b17d0498。前の計画の「裁定のあとの小さな直し」。 | 2026-10-16T00:01:00 | 2026-10-16T00:46:00 | 100 |
| 124 | 45 | CR-772(タスクグループを 1 回のドラッグで)の実装 | 2026-10-16T00:01:00 | 2026-10-16T03:52:00 | 合流 0ed0c093、試験 a3e56a4a、型の直し 96cb8168。 | 2026-10-16T00:01:00 | 2026-10-16T03:52:00 | 100 |
| 100 | 46 | dist の作り直し | 2026-10-16T01:22:00 | 2026-10-16T01:44:00 | edaa57b4。 | 2026-10-16T01:22:00 | 2026-10-16T01:44:00 | 100 |
| 125 | 47 | CR-774(深さの上限で問う)の起草と仕様の段 | 2026-10-16T03:57:00 | 2026-10-16T04:42:00 | 36c8e3d2・12ba27fa(枝 claude/keen-swartz-459eef、統合の枝へはまだ)。 | 2026-10-16T03:57:00 | 2026-10-16T04:42:00 | 100 |
| 101 | 48 | 作業木の GT-2(MSPDI のスキーマを写して) | 2026-10-16T03:57:00 | 2026-10-16T05:00:00 | 通った(引継書 99024c86)。始まりは 6fbb69fe の時刻。 | 2026-10-16T03:57:00 | 2026-10-16T05:00:00 | 100 |
| 130 | 49 | CR-774(深さの上限で問う)の仕様の段の合流 | 2026-10-16T04:42:00 | 2026-10-16T05:10:00 | d75bc777(integ/coord-1016)。 | 2026-10-16T04:42:00 | 2026-10-16T05:10:00 | 100 |
| 39 | 50 | 根の一括の GT-2 と push | 2026-10-16T05:00:00 | 2026-10-16T05:35:00 | 60d65950、push は 05:35 ごろ(調整役)。始まりは 05:00(調整役)。 | 2026-10-16T05:00:00 | 2026-10-16T05:35:00 | 100 |
| 138 | 51 | 紹介頁(docs/about)のタブ 05「拡張の試し」・@pure の注・DFC-2890/2891 | 2026-10-16T05:30:00 | 2026-10-16T05:42:00 | 3d6383c8、合流 a02dfb9d。 | 2026-10-16T05:30:00 | 2026-10-16T05:42:00 | 100 |
| 131 | 52 | CR-774(深さの上限で問う)の実装 | 2026-10-16T05:30:00 | 2026-10-16T06:40:00 | 合流 c6b9bff8 から、合わせ 7002c1d0、dist 6c11e22a。 | 2026-10-16T05:30:00 | 2026-10-16T06:40:00 | 100 |
| 132 | 53 | CR-774(深さの上限で問う)の仕様だけを読む試験 | 2026-10-16T05:30:00 | 2026-10-16T06:06:00 | 合流 c6b9bff8。 | 2026-10-16T05:30:00 | 2026-10-16T06:06:00 | 100 |
| 143 | 54 | CR-774(深さの上限で問う)と紹介頁の入った先端の GT-2 と push | 2026-10-16T06:40:00 | 2026-10-16T07:15:00 | push は 07:15 ごろ(調整役)。性能の試験は先端ごとに回り、赤は前と同じ NFR-002/003 だけ(p95 30〜39 ms)。 | 2026-10-16T06:40:00 | 2026-10-16T07:15:00 | 100 |
| 127 | 55 | CR-774(深さの上限で問う)と紹介頁を見て tier B を選ぶ | 2026-10-16T07:15:00 | 2026-10-16T07:25:00 | JDG-2415。07:25 ごろ(調整役)。 | 2026-10-16T07:15:00 | 2026-10-16T07:25:00 | 100 |
| 137 | 56 | CR-775(Alt の寄せは離した時点で読む, DFC-2700〜2702)の実装 | 2026-10-16T07:25:00 | 2026-10-16T08:55:00 | α の席 1〜3、dist d9e37fb7。 | 2026-10-16T07:25:00 | 2026-10-16T08:55:00 | 100 |
| 107 | 57 | CR-776(命令の値 19 を列の名へ, JDG-2361)の実装 | 2026-10-16T07:25:00 | 2026-10-16T08:55:00 | dist d9e37fb7。 | 2026-10-16T07:25:00 | 2026-10-16T08:55:00 | 100 |
| 134 | 58 | CR-777(コメントボックスの線先の吸い付き, DFC-2911)の実装 | 2026-10-16T07:25:00 | 2026-10-16T08:55:00 | e9eb38c4・4ab6f2ba、dist d9e37fb7。tier C から前倒し。 | 2026-10-16T07:25:00 | 2026-10-16T08:55:00 | 100 |
| 136 | 59 | CR-778(PI-39 の消えた型, DFC-2903)の実装 | 2026-10-16T07:25:00 | 2026-10-16T08:55:00 | dist d9e37fb7。 | 2026-10-16T07:25:00 | 2026-10-16T08:55:00 | 100 |
| 114 | 60 | DFC-2870(実績期間の欄の幅)の直し | 2026-10-16T07:25:00 | 2026-10-16T08:55:00 | dist d9e37fb7。 | 2026-10-16T07:25:00 | 2026-10-16T08:55:00 | 100 |
| 135 | 61 | DFC-2912(箱を引いて離しても変わらない操作)の調べと直し | 2026-10-16T07:25:00 | 2026-10-16T08:55:00 | dist d9e37fb7。 | 2026-10-16T07:25:00 | 2026-10-16T08:55:00 | 100 |
| 113 | 62 | DFC-557(MSPDI の拒否が黙る)の直し | 2026-10-16T07:25:00 | 2026-10-16T08:55:00 | dist d9e37fb7。 | 2026-10-16T07:25:00 | 2026-10-16T08:55:00 | 100 |
| 110 | 63 | DFC-2856(形の外れた命令の束を断る)の実装 | 2026-10-16T07:25:00 | 2026-10-16T08:55:00 | dist d9e37fb7。 | 2026-10-16T07:25:00 | 2026-10-16T08:55:00 | 100 |
| 43 | 64 | tier B の入った先端の GT-2 と push・Pages | 2026-10-16T08:55:00 | 2026-10-16T18:35:00 | 検査 23 の数を上げた(JDG-2416、6e9262ad 17:37)のち f3224c74、push は 18:35 ごろ(調整役)。 | 2026-10-16T08:55:00 | 2026-10-16T18:35:00 | 100 |
| 148 | 65 | CR-780(変えなかった書き込みは未保存を立てない, FR-100)の実装 | 2026-10-16T18:35:00 | 2026-10-16T20:20:00 | JDG-2421。合流 6d7a505f。 | 2026-10-16T18:35:00 | 2026-10-16T20:20:00 | 100 |
| 149 | 66 | DFC-2909(深さの上限は命令ごとに測る)の直し | 2026-10-16T18:35:00 | 2026-10-16T20:20:00 | JDG-2414。合流 6d7a505f。 | 2026-10-16T18:35:00 | 2026-10-16T20:20:00 | 100 |
| 150 | 67 | CR-781(窓が開いているときの遅延診断は窓だけを閉じる)の実装 | 2026-10-16T18:35:00 | 2026-10-16T20:20:00 | 合流 6d7a505f。 | 2026-10-16T18:35:00 | 2026-10-16T20:20:00 | 100 |
| 151 | 68 | CR-780・781(未保存と遅延診断の窓)と DFC-2909 の入った先端の GT-2 と push | 2026-10-16T20:20:00 | 2026-10-16T20:45:00 | d34abfb6、push は 20:45 ごろ(調整役)。 | 2026-10-16T20:20:00 | 2026-10-16T20:45:00 | 100 |
| 37 | 69 | 1 枚のチェックリストへ CR-780(未保存)の 5 節・CR-781・DFC-2909 の行を足す | 2026-10-16T20:20:00 | 2026-10-16T20:45:00 | 1f62f3cb。 | 2026-10-16T20:20:00 | 2026-10-16T20:45:00 | 100 |
| 152 | 70 | DFC-2950(CR-777 が上げ忘れた形式の版を上げる)の直しと push | 2026-10-16T20:52:00 | 2026-10-16T22:30:00 | 9cf6743a・0a08da70・dist 9171429f(22:08)、push は 22:30 ごろ(調整役)。 | 2026-10-16T20:52:00 | 2026-10-16T22:30:00 | 100 |

| uid | wbsOrder | name | start | finish | notes | actualStart | actualFinish | percentComplete | dependencies | deadline | milestone |
| --- | --- | --- | --- | --- | --- | --- | --- | --- | --- | --- | --- |
| 41 | 71 | 1 枚のチェックリストを実物で触って報告する | 2026-10-16T21:00:00 | 2026-10-17T01:00:00 | 報告は docs/review/user-report-2026-10-17.md に仕分けた。時刻は測れないので、金曜の利用者の時間帯(21:00〜25:00)で置いた。 | 2026-10-16T21:00:00 | 2026-10-17T01:00:00 | 100 |  |  |  |
| 153 | 72 | 1 枚のチェックリストの 5〜14 行の Playwright での確かめ | 2026-10-16T22:30:00 | 2026-10-17T01:00:00 | 7 行 OK・DFC-2870 NG・2 行未確認(調整役)。始まりは push の 22:30、終わりは 01:00 ごろ。 | 2026-10-16T22:30:00 | 2026-10-17T01:00:00 | 100 |  |  |  |
| 42 | 73 | DFC-2870(実績期間の欄の幅)の直し直しと CR-783(時の段で引いて作る)の実装 | 2026-10-16T22:08:00 | 2026-10-17T04:47:00 | 席 1、枝 bcd5a4dd(04:47)。JDG-2422。統合の枝へはまだ。Playwright の 1 本は未実行。 | 2026-10-16T22:08:00 | 2026-10-17T04:47:00 | 100 |  |  |  |
| 154 | 74 | CR-782(コメントボックスの線先が出てパネルが文字を受ける)の実装 | 2026-10-16T22:08:00 | 2026-10-17T04:59:00 | 席 3、枝 0f2d5e47(04:59)。統合の枝へはまだ。 | 2026-10-16T22:08:00 | 2026-10-17T04:59:00 | 100 |  |  |  |
| 155 | 75 | 規則 04 の 7 節と test_route(合流の後に試験を選ぶ, JDG-2419) | 2026-10-17T01:00:00 | 2026-10-17T04:00:00 | a76dbe21(04:00)。始まりは前の仕事の終わり 01:00。 | 2026-10-17T01:00:00 | 2026-10-17T04:00:00 | 100 |  |  |  |
| 156 | 76 | 利用者の報告(DFC-2960〜2973・JDG-2460〜2475)の仕分け | 2026-10-17T04:00:00 | 2026-10-17T05:18:00 | 96d31c60(05:18)。束 A〜F の提案。 | 2026-10-17T04:00:00 | 2026-10-17T05:18:00 | 100 |  |  |  |
| 157 | 77 | 席 1・3(DFC-2870・CR-783・CR-782)の合流 | 2026-10-17T05:30:00 | 2026-10-17T06:00:00 | 次の調整役が合流する。 |  |  | 0 |  |  |  |
| 158 | 78 | test_route が選ぶ試験(PERF・e2e・探り針) | 2026-10-17T06:00:00 | 2026-10-17T07:00:00 | 規則 04 の 7 節。席 1 の Playwright の 1 本もここで。 |  |  | 0 |  |  |  |
| 159 | 79 | 席 1・3 の入った先端の GT-2 と push | 2026-10-17T07:00:00 | 2026-10-17T09:00:00 |  |  |  | 0 |  |  |  |
| 160 | 80 | 不具合の聞き取り(実績を入力する UI が変になった) | 2026-10-17T05:30:00 | 2026-10-17T07:30:00 | 最初に(調整役)。聞き取りの席。 |  |  | 0 |  |  |  |
| 161 | 81 | 聞き取りで出た不具合(実績を入力する UI)の直し | 2026-10-17T07:30:00 | 2026-10-17T11:30:00 | 仮置き。大きさ M。 |  |  | 0 |  |  |  |
| 162 | 82 | 残りの行(未確認 2 行と DFC-2870)を実物で確かめる | 2026-10-17T09:00:00 | 2026-10-17T10:00:00 | 土の利用者の時間帯(09:00〜23:00)。 |  |  | 0 | 159 1 0 7 |  |  |
| 163 | 83 | DFC-2960・2961(タスクグループを運ぶ手掛かり, 束 A)の実装 | 2026-10-17T06:00:00 | 2026-10-17T10:00:00 | 束 A。大きさ M。利用者と決める。 |  |  | 0 | 157 1 0 7 |  |  |
| 164 | 84 | DFC-2962〜2965・2970(パネルの幅と設定の語, 束 B)の実装 | 2026-10-17T06:00:00 | 2026-10-17T14:00:00 | 束 B。大きさ L(幅と語 M・タイムゾーンの一覧 M)。 |  |  | 0 | 157 1 0 7 |  |  |
| 165 | 85 | DFC-2972(担当の欄, 束 C)の実装 | 2026-10-17T14:00:00 | 2026-10-17T22:00:00 | 束 C。B と同じ席で B の後。大きさ L。 |  |  | 0 |  |  |  |
| 166 | 86 | DFC-2973・2968(最前面に配置, 束 D)の実装 | 2026-10-17T06:00:00 | 2026-10-17T10:00:00 | 束 D。席 3(CR-782)の続き。大きさ M。 |  |  | 0 | 157 1 0 7 |  |  |
| 167 | 87 | DFC-2966・2967・2969(文書の形と実績の表, 束 E)の仕様と実装 | 2026-10-17T06:00:00 | 2026-10-17T10:00:00 | 束 E。DFC-2966 は確かめが先。形を変えれば形式の版を上げる(FR-073)。大きさ M。 |  |  | 0 | 157 1 0 7 |  |  |
| 168 | 88 | DFC-2971(パネルの値の全点, 束 F)の試験 | 2026-10-17T22:00:00 | 2026-10-18T06:00:00 | 束 F。B・C・D の後に仕様だけを読む試験の体。大きさ L。 |  |  | 0 | 165 1 0 7 |  |  |
| 139 | 89 | 最後の GT-2 と push | 2026-10-18T06:00:00 | 2026-10-18T08:00:00 | 日 23:00 まで(期限)。週の使用量は日 18:00 に 85%、23:00 に 90% まで。 |  |  | 0 |  | 2026-10-18T23:00:00 |  |
| 140 | 90 | α 版(10/19)のお披露目 | 2026-10-19T09:00:00 | 2026-10-19T09:00:00 | 月 09:00。月の夕方から水 19:00 までは休み。 |  |  | 0 | 139 1 0 7 |  | True |
| 147 | 91 | 週の使用量の戻り(水 19:00)と仕事の再開 | 2026-10-21T19:00:00 | 2026-10-21T19:00:00 | 利用者 2026-10-16: 月の夕方から水 19:00 まで仕事をしない。 |  |  | 0 | 140 1 0 7 |  | True |
| 85 | 92 | CR-767(状態機械の原稿)の波 1 の実装 | 2026-10-21T19:00:00 | 2026-10-22T00:30:00 | tier C。JDG-2362〜2364。22 時間を波 1・2 に半分ずつ、x 0.5。 |  |  | 0 | 147 1 0 7 |  |  |
| 86 | 93 | CR-767(状態機械の原稿)の波 2 の実装 | 2026-10-22T00:30:00 | 2026-10-22T06:00:00 | tier C。 |  |  | 0 |  |  |  |
| 87 | 94 | CR-767(状態機械の原稿)の合流と確かめ | 2026-10-22T06:00:00 | 2026-10-22T06:30:00 |  |  |  | 0 | 86 1 0 7 |  |  |
| 104 | 95 | CR-768(保存の媒体の型)の C と CM-27 の注の実装 | 2026-10-22T06:30:00 | 2026-10-22T10:30:00 | tier C。大きさ M。 |  |  | 0 | 87 1 0 7 |  |  |
| 105 | 96 | CR-768(保存の媒体の型)の C の合流と確かめ | 2026-10-22T10:30:00 | 2026-10-22T11:00:00 |  |  |  | 0 | 104 1 0 7 |  |  |
| 15 | 97 | T-064(公開の名 約 479 の呼び出し形, DFC-2640)の書き起こしと再検討 | 2026-10-21T19:00:00 | 2026-10-22T07:00:00 | tier C。 |  |  | 0 | 147 1 0 7 |  |  |
| 77 | 98 | 古い STOP の印 16 件の除去 | 2026-10-22T07:00:00 | 2026-10-22T11:00:00 | 大きさ M。 |  |  | 0 |  |  |  |
| 115 | 99 | edgeOf(重複した関数)の 1 つへの寄せ | 2026-10-21T19:00:00 | 2026-10-21T21:00:00 | 大きさ S。 |  |  | 0 | 147 1 0 7 |  |  |
| 116 | 100 | NOT_STORED_DUMMY_SIZES(手で持つ寸法)の生成への置き換え | 2026-10-21T21:00:00 | 2026-10-21T23:00:00 | 大きさ S。 |  |  | 0 |  |  |  |
| 117 | 101 | baseChangeCommandOf(名の複数形)の言い直し | 2026-10-21T23:00:00 | 2026-10-22T01:00:00 | 大きさ S。 |  |  | 0 |  |  |  |
| 118 | 102 | DFC-2646〜2648(STOP の仕分けで出た 3 行)の直し | 2026-10-21T19:00:00 | 2026-10-21T23:00:00 | 大きさ M。 |  |  | 0 | 147 1 0 7 |  |  |
| 11 | 103 | 未検討 約 45 行(DFC-611・2560〜2569・2690〜2699 ほか)のトリアージ | 2026-10-21T23:00:00 | 2026-10-22T03:00:00 | 台帳の提案だけ。大きさ M。 |  |  | 0 |  |  |  |
| 32 | 104 | トリアージで出た直しの実装 | 2026-10-22T03:00:00 | 2026-10-22T11:00:00 | 仮置き。大きさ L。 |  |  | 0 |  |  |  |
| 18 | 105 | 仕様待ちの残り(DFC-560・631・1063〜1073 ほか)の CR の起草 | 2026-10-21T19:00:00 | 2026-10-21T23:00:00 | 大きさ M。 |  |  | 0 | 147 1 0 7 |  |  |
| 35 | 106 | 仕様待ちの残りの CR の実装 | 2026-10-21T23:00:00 | 2026-10-22T07:00:00 | 大きさ L。 |  |  | 0 |  |  |  |
| 12 | 107 | 罠の束(DFC-544・547・548・549)の実装 | 2026-10-22T11:00:00 | 2026-10-22T15:00:00 | 大きさ M。 |  |  | 0 |  |  |  |
| 20 | 108 | 実装待ちの残り(DFC-464・532〜562 ほか)の実装 | 2026-10-22T15:00:00 | 2026-10-22T23:00:00 | 大きさ L。 |  |  | 0 |  |  |  |
| 19 | 109 | DFC-730(GP-1)の実装 | 2026-10-22T07:00:00 | 2026-10-22T09:00:00 | 大きさ S。 |  |  | 0 |  |  |  |
| 17 | 110 | 試験待ち 11 行(DFC-550・567・641 ほか)の仕様だけを読む試験 | 2026-10-22T01:00:00 | 2026-10-22T05:00:00 | 大きさ M。 |  |  | 0 |  |  |  |
| 13 | 111 | 用語集の JSON 化(DFC-2175)の仕様と実装 | 2026-10-22T05:00:00 | 2026-10-22T09:00:00 | 大きさ M。 |  |  | 0 |  |  |  |
| 36 | 112 | 全部の合流と台帳の締め | 2026-10-22T23:00:00 | 2026-10-23T00:00:00 | 非 AI の直しが全部入ったことを台帳で数える。 |  |  | 0 |  |  |  |
| 141 | 113 | tier C の入った一括の GT-2 と push | 2026-10-23T00:00:00 | 2026-10-23T02:00:00 |  |  |  | 0 |  |  |  |
| 27 | 114 | W4(アダプタ層の分割)の前半 CR-578→579→580 の実装 | 2026-10-23T02:00:00 | 2026-10-23T10:00:00 | 大きさ L。 |  |  | 0 | 141 1 0 7 |  |  |
| 28 | 115 | W4 の後半(CR-581 の後半と properties-panel)の実装 | 2026-10-23T10:00:00 | 2026-10-23T18:00:00 | 大きさ L。 |  |  | 0 |  |  |  |
| 29 | 116 | W5(異常系 DFC-586 ほか)の仕様 | 2026-10-23T18:00:00 | 2026-10-24T02:00:00 | JDG-1479 により W4 の後。大きさ L。 |  |  | 0 |  |  |  |
| 30 | 117 | W5(異常系 DFC-922 ほか)の実装と試験 | 2026-10-24T02:00:00 | 2026-10-24T10:00:00 | 大きさ L。 |  |  | 0 |  |  |  |
| 31 | 118 | W4・W5 の合流と GT-2・push | 2026-10-24T10:00:00 | 2026-10-24T12:00:00 |  |  |  | 0 | 30 1 0 7 |  |  |
| 45 | 119 | CR-695(対話欄の廃止)の実装 | 2026-10-23T02:00:00 | 2026-10-23T10:00:00 | 大きさ L。 |  |  | 0 | 141 1 0 7 |  |  |
| 46 | 120 | CR-697(取次が口と鍵を覚える)の実装 | 2026-10-23T02:00:00 | 2026-10-23T10:00:00 | 大きさ L。 |  |  | 0 | 141 1 0 7 |  |  |
| 47 | 121 | DFC-2214・2215(AM-19 の説明)の仕様と実装 | 2026-10-23T02:00:00 | 2026-10-23T06:00:00 | 大きさ M。 |  |  | 0 | 141 1 0 7 |  |  |
| 44 | 122 | 正式公開の判断(JDG-1740) | 2026-10-24T12:00:00 | 2026-10-24T12:00:00 | 解明・リファクタ(W4・W5)・分刻みの日程が終わったことを確かめる。AI 連携は待たない。 |  |  | 0 | 31 1 0 7 |  | True |
| 48 | 123 | AI 連携の合流と GT-2・push | 2026-10-24T12:00:00 | 2026-10-24T14:00:00 |  |  |  | 0 | 45 1 0 7, 46 1 0 7, 47 1 0 7 |  |  |
| 49 | 124 | 計画の終わり | 2026-10-24T14:00:00 | 2026-10-24T14:00:00 |  |  |  | 0 | 44 1 0 7 |  | True |
